# BiblioNet

Schedule from MS Project, 2020-11-16 to 2022-01-18, costs in €, A marks actual dates.
C07

## Calendars

- Standard: Mon-Fri 09:00-13:00, 14:00-18:00; Sat off; Sun 09:00-13:00, 14:00-18:00. Exceptions (off unless hours are given): 2020-12-07 to 2020-12-12 (Vacanze), 2021-12-11 09:00-13:00, 14:00-18:00.

## Resources

| Resource | Rate |
| --- | --- |
| Alessio Salzano | 15 |
| Carmine Citro | 15 |
| Alessandro Cavaliere | 15 |
| Maria Rosaria Giudice | 15 |
| Gerardo Sessa | 15 |
| Claudio Buono | 15 |
| Nicola Cappello | 15 |

## Schedule

| ID | WBS | Task | Type | Duration | Start | Finish | Predecessors | Complete | Remaining | Actual start | Total slack | Constraint | Work | Actual work | Cost | Baseline cost | Actual cost |
| --- | --- | --- | --- | --- | --- | --- | --- | --- | --- | --- | --- | --- | --- | --- | --- | --- | --- |
| 1 | 1 | **UnisaEAT** |  | 79d? | 2021-10-20 | 2022-01-18 |  | 96% | 3.17d? | 2020-11-16 |  |  | 350h | 330h | 8,870 | 26,180 | 8,503.2 |
| 2 | 1.1 | **Requirements Elicitation and Analysis** |  | 26d | 2021-10-20 | 2021-11-18 |  | 99% | 0d | 2020-11-16 |  |  | 93h | 93h | 3,570 | 6,510 | 3,570 |
| 3 | 1.1.1 | **Elicitation** |  | 8d | 2021-10-22 | 2021-10-31 A |  | 100% |  | 2021-10-23 |  |  | 56h | 56h | 960 | 3,920 | 960 |
| 4 | 1.1.1.1 | Identificazione degli attori |  | 3d | 2021-10-23 A | 2021-10-26 A |  | 100% |  |  |  |  | 8h | 8h | 120 | 560 | 120 |
| 5 | 1.1.1.2 | Analisi del sistema attuale e costruzione di Activity Diagrams |  | 2d | 2021-10-23 A | 2021-10-25 A | 4 | 100% |  |  |  |  | 8h | 8h | 120 | 560 | 120 |
| 6 | 1.1.1.3 | Scrittura di scenari e casi d'uso per l'individuazione di RF e RNF |  | 1d | 2021-10-26 A | 2021-10-26 A | 4 | 100% |  |  |  |  | 8h | 8h | 120 | 560 | 120 |
| 7 | 1.1.1.4 | Individuazione dei Requisiti Funzionali |  | 2d | 2021-10-28 A | 2021-10-29 A | 6 | 100% |  |  |  |  | 8h | 8h | 240 | 560 | 240 |
| 8 | 1.1.1.5 | Individuazione dei Requisiti NON Funzionali |  | 2d | 2021-10-28 A | 2021-10-29 A | 6 | 100% |  |  |  |  | 8h | 8h | 120 | 560 | 120 |
| 9 | 1.1.1.6 | Scrittura di scenari e casi d'uso sulla base dei requisiti funzionali |  | 2d | 2021-10-29 A | 2021-10-31 A | 7 | 100% |  |  |  |  | 16h | 16h | 240 | 1,120 | 240 |
| 10 | 1.1.2 | **Analysis** |  | 8d | 2021-10-31 A | 2021-11-08 A | 3 | 100% |  |  |  |  | 33h | 33h | 2,190 | 2,310 | 2,190 |
| 11 | 1.1.2.1 | **Costruzione del modello ad oggetti** |  | 4d | 2021-10-31 A | 2021-11-03 A |  | 100% |  |  |  |  | 17h | 17h | 930 | 1,190 | 930 |
| 12 | 1.1.2.1.1 | Individuazione degli oggetti (Entity, Boundary, Control) a partire da RF, scenari e casi d'uso |  | 1d | 2021-10-31 A | 2021-10-31 A |  | 100% |  |  |  |  | 5h | 5h | 150 | 350 | 150 |
| 13 | 1.1.2.1.2 | Costruzione del class diagram usando gli Entity |  | 3d | 2021-11-01 A | 2021-11-03 A | 12 | 100% |  |  |  |  | 8h | 8h | 360 | 560 | 360 |
| 14 | 1.1.2.1.3 | Costruzione degli Object Diagrams |  | 1d | 2021-11-02 A | 2021-11-02 A | 12 | 100% |  |  |  |  | 4h | 4h | 420 | 280 | 420 |
| 15 | 1.1.2.2 | **Costruzione del modello dinamico** |  | 4d | 2021-11-04 A | 2021-11-08 A | 11 | 100% |  |  |  |  | 16h | 16h | 1,260 | 1,120 | 1,260 |
| 16 | 1.1.2.2.1 | Costruzione dei Sequence Diagrams |  | 2d | 2021-11-04 A | 2021-11-05 A |  | 100% |  |  |  |  | 8h | 8h | 840 | 560 | 840 |
| 17 | 1.1.2.2.2 | Costruzione degli state chart diagrams |  | 1d | 2021-11-04 A | 2021-11-04 A |  | 100% |  |  |  |  | 2h | 2h | 210 | 140 | 210 |
| 18 | 1.1.2.2.3 | Costruzione dei Navigational Paths |  | 1d | 2021-11-05 A | 2021-11-05 A | 16 | 100% |  |  |  |  | 2h | 2h | 30 | 140 | 30 |
| 19 | 1.1.2.2.4 | Costruzione dei mockups |  | 2d | 2021-11-06 A | 2021-11-08 A | 16 | 100% |  |  |  |  | 4h | 4h | 180 | 280 | 180 |
| 20 | 1.1.3 | Stesura e revisione del RAD |  | 3d | 2020-11-16 A | 2020-11-18 A | 10 | 100% |  |  |  |  | 4h | 4h | 420 | 280 | 420 |
| 21 | 1.1.4 | Requirements Analysis Document | milestone | 0d | 2021-11-18 | 2021-11-18 |  |  |  |  | 54d | start no earlier than 2021-11-18 |  |  |  |  |  |
| 22 | 1.2 | **System Design** |  | 10d | 2021-11-19 A | 2021-11-30 | 2 | 99% | 0d |  |  |  | 37h | 37h | 1,260 | 2,590 | 1,260 |
| 23 | 1.2.1 | **Identificare gli obiettivi di design** |  | 1d | 2021-11-19 A | 2021-11-19 A |  | 100% |  |  |  |  | 6h | 6h | 210 | 420 | 210 |
| 24 | 1.2.1.1 | Identificazione dei design goals |  | 0.5d | 2021-11-19 A | 2021-11-19 A |  | 100% |  |  |  |  | 4h | 4h | 120 | 280 | 120 |
| 25 | 1.2.1.2 | Identificare I trade-offs design goal |  | 0.5d | 2021-11-19 A | 2021-11-19 A | 24 | 100% |  |  |  |  | 2h | 2h | 90 | 140 | 90 |

| ID | WBS | Task | Type | Duration | Start | Finish | Predecessors | Complete | Remaining | Total slack | Free slack | Constraint | Work | Actual work | Cost | Baseline cost | Actual cost |
| --- | --- | --- | --- | --- | --- | --- | --- | --- | --- | --- | --- | --- | --- | --- | --- | --- | --- |
| 26 | 1.2.2 | **Individuare la decomposizione in sottosistemi** |  | 2d | 2021-11-19 A | 2021-11-21 A | 23 | 100% |  |  |  |  | 6h | 6h | 90 | 420 | 90 |
| 27 | 1.2.2.1 | Scelta dell'architettura del sistema e divisione in layers |  | 1d | 2021-11-19 A | 2021-11-19 A |  | 100% |  |  |  |  | 2h | 2h | 30 | 140 | 30 |
| 28 | 1.2.2.2 | Divisione del sistema in sottosistemi |  | 1d | 2021-11-20 A | 2021-11-21 A | 27 | 100% |  |  |  |  | 4h | 4h | 60 | 280 | 60 |
| 29 | 1.2.3 | **Rifinire la decomposizione per soddisfare gli obiettivi di design** |  | 6d | 2021-11-21 A | 2021-11-26 A | 26 | 100% |  |  |  |  | 21h | 21h | 840 | 1,470 | 840 |
| 30 | 1.2.3.1 | Mappare i sottosistemi su un hardware |  | 1.5d | 2021-11-21 A | 2021-11-22 A |  | 100% |  |  |  |  | 1h | 1h | 60 | 70 | 60 |
| 31 | 1.2.3.2 | **Specifica dei dati persistenti** |  | 2.5d | 2021-11-23 A | 2021-11-25 A |  | 100% |  |  |  |  | 12h | 12h | 660 | 840 | 660 |
| 32 | 1.2.3.2.1 | Identificare gli oggetti persistenti |  | 1d | 2021-11-23 A | 2021-11-23 A |  | 100% |  |  |  |  | 4h | 4h | 120 | 280 | 120 |
| 33 | 1.2.3.2.2 | Costruzione dello schema dei dati persistenti |  | 1d | 2021-11-24 A | 2021-11-24 A | 32 | 100% |  |  |  |  | 4h | 4h | 120 | 280 | 120 |
| 34 | 1.2.3.2.3 | Costruzione del Dizionario dei Dati |  | 0.5d | 2021-11-25 A | 2021-11-25 A | 33 | 100% |  |  |  |  | 4h | 4h | 420 | 280 | 420 |
| 35 | 1.2.3.3 | Definire la matrice per il controllo degli accessi |  | 0.5d | 2021-11-23 A | 2021-11-23 A |  | 100% |  |  |  |  | 1h | 1h | 15 | 70 | 15 |
| 36 | 1.2.3.4 | Definire il Flusso di Controllo Globale del sistema |  | 0.5d | 2021-11-23 A | 2021-11-23 A | 35 | 100% |  |  |  |  | 1h | 1h | 15 | 70 | 15 |
| 37 | 1.2.3.5 | Identificare i servizi per ogni sottosistema |  | 1d | 2021-11-25 A | 2021-11-25 A | 36 | 100% |  |  |  |  | 4h | 4h | 60 | 280 | 60 |
| 38 | 1.2.3.6 | Identificare le Boundary Conditions |  | 1d | 2021-11-26 A | 2021-11-26 A |  | 100% |  |  |  |  | 2h | 2h | 30 | 140 | 30 |
| 39 | 1.2.4 | Stesura e revisione dello SDD |  | 3d | 2021-11-27 A | 2021-11-30 A | 29 | 100% |  |  |  |  | 4h | 4h | 120 | 280 | 120 |
| 40 | 1.2.5 | System Design Document | milestone | 0d | 2021-11-30 | 2021-11-30 | 39 |  |  | 2d |  |  |  |  |  |  |  |
| 41 | 1.3 | **System Test Design** |  | 4d | 2021-12-03 A | 2021-12-07 | 22 | 99% | 0d |  |  |  | 16h | 16h | 480 | 1,120 | 480 |
| 42 | 1.3.1 | Identificazione dei casi di test funzionali tramite category partition |  | 2d | 2021-12-03 A | 2021-12-05 A |  | 100% |  |  |  |  | 8h | 8h | 240 | 560 | 240 |
| 43 | 1.3.2 | Scrittura dei casi di test |  | 2d | 2021-12-05 A | 2021-12-06 A | 42 | 100% |  |  |  |  | 8h | 8h | 240 | 560 | 240 |
| 44 | 1.3.3 | Test plan e Test Case Specification | milestone | 0d | 2021-12-06 | 2021-12-06 | 43 |  |  | 0d |  |  |  |  |  |  |  |
| 45 | 1.4 | Consegna intermedia | milestone | 0d | 2021-12-13 | 2021-12-13 | 22, 2, 41 |  |  | -6d | 0d | start no earlier than 2021-12-13 |  |  |  |  |  |
| 46 | 1.5 | **Object Design** |  | 5d | 2021-12-07 A | 2021-12-11 | 45 | 99% | 0d |  |  |  | 30h | 30h | 810 | 1,820 | 810 |
| 47 | 1.5.1 | **Riuso** |  | 2d | 2021-12-07 A | 2021-12-08 A |  | 100% |  |  |  |  | 6h | 6h | 270 | 420 | 270 |
| 48 | 1.5.1.1 | Identificazione e integrazione di componenti COTS |  | 2d | 2021-12-07 A | 2021-12-08 A |  | 100% |  |  |  |  | 2h | 2h | 90 | 140 | 90 |
| 49 | 1.5.1.2 | Identificazione e integrazione di Design Patterns utili |  | 2d | 2021-12-07 A | 2021-12-08 A |  | 100% |  |  |  |  | 4h | 4h | 180 | 280 | 180 |

| ID | WBS | Task | Type | Duration | Start | Finish | Predecessors | Complete | Remaining | Total slack | Free slack | Constraint | Work | Actual work | Cost | Baseline cost | Actual cost |
| --- | --- | --- | --- | --- | --- | --- | --- | --- | --- | --- | --- | --- | --- | --- | --- | --- | --- |
| 50 | 1.5.2 | **Specifica delle interfacce** |  | 3d | 2021-12-08 A | 2021-12-10 A |  | 100% |  |  |  |  | 20h | 20h | 420 | 1,120 | 420 |
| 51 | 1.5.2.1 | Identificazione dei packages a partire dai sottosistemi |  | 0.5d | 2021-12-08 A | 2021-12-08 A |  | 100% |  |  |  |  | 1h | 1h | 15 | 70 | 15 |
| 52 | 1.5.2.2 | Identificazione delle classi per ogni package |  | 0.5d | 2021-12-08 A | 2021-12-08 A | 51 | 100% |  |  |  |  | 1h | 1h | 15 | 70 | 15 |
| 53 | 1.5.2.3 | Specifica degli attributi e delle signatures dei metodi |  | 1d | 2021-12-09 A | 2021-12-09 A | 52 | 100% |  |  |  |  | 12h | 12h | 180 | 560 | 180 |
| 54 | 1.5.2.4 | Specifica dei vincoli: invarianti, precondizioni e postcondizioni |  | 0.5d | 2021-12-10 A | 2021-12-10 A | 53 | 100% |  |  |  |  | 4h | 4h | 180 | 280 | 180 |
| 55 | 1.5.2.5 | Specifica delle eccezioni |  | 0.5d | 2021-12-10 A | 2021-12-10 A | 54 | 100% |  |  |  |  | 2h | 2h | 30 | 140 | 30 |
| 56 | 1.5.3 | Scrittura e revisione dello ODD |  | 1d | 2021-12-10 A | 2021-12-10 A | 47, 50 | 100% |  |  |  |  | 4h | 4h | 120 | 280 | 120 |
| 57 | 1.5.4 | Object Design Document | milestone | 0d | 2021-12-11 | 2021-12-11 | 56 |  |  | 34d |  | start no earlier than 2021-12-11 |  |  |  |  |  |
| 58 | 1.6 | Training | manual | 2d | 2021-12-11 | 2021-12-12 |  |  |  |  |  |  | 2h |  | 260 |  |  |
| 59 | 1.7 | **System Implementation** |  | 26d | 2021-12-12 A | 2022-01-10 | 46 | 96% | 1.14d |  |  |  | 148h | 130h | 2,130 | 9,100 | 2,023.2 |
| 60 | 1.7.1 | Setup dell'ambiente di lavoro |  | 1.25d | 2021-12-12 A | 2021-12-13 |  | 80% | 0.25d | 0.75d | 0d |  | 4h | 2h | 30 | 140 | 24 |
| 61 | 1.7.2 | Setup del DB |  | 2.12d | 2021-12-12 A | 2021-12-14 | 60 | 94% | 0.12d | 19.88d | 0d |  | 5h | 4h | 180 | 280 | 169.2 |
| 62 | 1.7.3 | Implementazione delle funzionalità |  | 22.25d | 2021-12-13 A | 2022-01-07 | 61 | 94% | 1.25d | 1.75d | 0d |  | 90h | 80h | 1,200 | 5,600 | 1,128 |
| 63 | 1.7.4 | Scrittura delle classi di test per Unit e Integration |  | 24.62d | 2021-12-13 A | 2022-01-10 | 62SS | 97% | 0.62d | 7.38d | 0d |  | 45h | 40h | 600 | 2,800 | 582 |
| 64 | 1.7.5 | Generazione della jsdoc e creazione della pagina per il completamento dello ODD |  | 1d | 2022-01-09 A | 2022-01-09 A | 62, 63 | 100% |  |  |  |  | 4h | 4h | 120 | 280 | 120 |
| 65 | 1.7.6 | Applicativo e Javadoc | milestone | 0d | 2022-01-10 | 2022-01-10 | 62, 63, 64 |  |  | 7.38d |  |  |  |  |  |  |  |
| 66 | 1.8 | **Testing** |  | 8d | 2022-01-10 A | 2022-01-18 | 62 | 99% | 0d |  |  |  | 24h | 24h | 360 | 1,680 | 360 |
| 67 | 1.8.1 | Esecuzione dei test di unità |  | 0.5d | 2022-01-10 A | 2022-01-10 A | 63 | 100% |  |  |  |  | 8h | 8h | 120 | 560 | 120 |
| 68 | 1.8.2 | Esecuzione dei test di integrazione |  | 0.5d | 2022-01-11 A | 2022-01-11 A | 63 | 100% |  |  |  |  | 8h | 8h | 120 | 560 | 120 |
| 69 | 1.8.3 | Esecuzione dei test di sistema |  | 0.5d | 2022-01-12 A | 2022-01-12 A | 59 | 100% |  |  |  |  | 8h | 8h | 120 | 560 | 120 |
| 70 | 1.8.4 | Test Incident Report e Test Summary Report | milestone | 0d | 2022-01-12 | 2022-01-12 | 67, 68, 69 |  |  | 5.5d |  |  |  |  |  |  |  |
| 71 | 1.9 | Consegna finale | milestone | 0d | 2022-01-18 | 2022-01-18 | 46, 59, 66 |  |  | 0d |  | start no earlier than 2022-01-18 |  |  |  |  |  |
